# SWE_02_Raspored_aktivnosti

Schedule from MS Project, 2017-03-11 to 2017-05-30, 4 hours a day.
SWETeam

## Calendars

- Standard: Mon-Sun 16:00-20:00.

## Resources

| Resource |
| --- |
| Architect |
| Architecture Reviewer |
| Business-Process Analyst |
| Business Designer |
| Business-Model Reviewer |
| Code Reviewer |
| Configuration Manager |
| Course Developer |
| Database Designer |
| Deployment Manager |
| Design Reviewer |
| Designer |
| Implementer |
| Integration Tester |
| Performance Tester |
| Process Engineer |
| Project Manager |
| Requirements Reviewer |
| Stakeholder |
| System Administrator |
| System Analyst |
| System Integrator |
| System Tester |
| Technical Writer |
| Test Designer |
| Tool Smith |
| Tim Bellum Gerere |
| Stevica Stojković |
| Marko Vučković |
| SS |

## Schedule

| ID | WBS | Task | Type | Duration | Start | Finish | Predecessors | Baseline start | Baseline finish | Baseline duration | Total slack | Free slack | Constraint | Resources | Work |
| --- | --- | --- | --- | --- | --- | --- | --- | --- | --- | --- | --- | --- | --- | --- | --- |
| 1 | 1 | **Očekivani rezultati** |  | 77d | 2017-03-15 | 2017-05-28 |  | 1998-06-11 | 1998-10-19 | 186d |  |  |  |  |  |
| 2 | 1.1 | Početak projekta | milestone | 0d | 2017-03-15 | 2017-03-15 | 15SS | 1998-06-11 | 1998-06-11 | 0d | 76.25d |  | start no earlier than 2017-03-15 |  |  |
| 3 | 1.2 | Vizija sistema | milestone | 0d | 2017-03-21 | 2017-03-21 | 18 | 1998-06-17 | 1998-06-17 | 0d | 70d |  | finish no earlier than 2017-03-21 |  |  |
| 4 | 1.3 | Dokument o zahtevima | milestone | 0d | 2017-04-04 | 2017-04-04 | 24 |  |  |  | 56d |  | finish no earlier than 2017-04-04 |  |  |
| 5 | 1.4 | Arhitekturni prototip | milestone | 0d | 2017-04-07 | 2017-04-07 | 25 |  |  |  | 53d |  | finish no earlier than 2017-04-07 |  |  |
| 6 | 1.5 | Prototip korisničkog interfejsa | milestone | 0d | 2017-04-11 | 2017-04-11 | 27 |  |  |  | 49d |  | finish no earlier than 2017-04-11 |  |  |
| 7 | 1.6 | Arhitekturni projekat | milestone | 0d | 2017-04-18 | 2017-04-18 | 28 | 1998-08-20 | 1998-08-20 | 0d | 42d |  | finish no earlier than 2017-04-18 |  |  |
| 8 | 1.7 | Detaljni projekat | milestone | 0d | 2017-05-02 | 2017-05-02 | 32 | 1998-10-06 | 1998-10-06 | 0d | 28d |  | finish no earlier than 2017-05-02 |  |  |
| 9 | 1.8 | Plan testiranja | milestone | 0d | 2017-05-09 | 2017-05-09 | 34 |  |  |  | 21d |  | finish no earlier than 2017-05-09 |  |  |
| 10 | 1.9 | Izveštaj o testiranju | milestone | 0d | 2017-05-16 | 2017-05-16 | 36 |  |  |  | 14d |  | finish no earlier than 2017-05-16 |  |  |
| 11 | 1.10 | Konačna verzija | milestone | 0d | 2017-05-16 | 2017-05-16 | 31 |  |  |  | 14d |  | finish no earlier than 2017-05-16 |  |  |
| 12 | 1.11 | Korisničko uputstvo | milestone | 0d | 2017-05-29 | 2017-05-29 | 41 |  |  |  | 1d |  | finish no earlier than 2017-05-29 |  |  |
| 13 | 1.12 | Prezentacija proizvoda | milestone | 0d | 2017-05-30 | 2017-05-30 | 39 |  |  |  | 0d |  | finish no earlier than 2017-05-30 |  |  |
| 15 | 2 | **Faza planiranja projekta** |  | 14d | 2017-03-11 | 2017-03-22 |  | 1998-06-11 | 1998-06-17 | 10d |  |  |  |  | 56h |
| 16 | 2.1 | **Preliminarna iteracija** |  | 14d | 2017-03-15 | 2017-03-28 |  | 1998-06-11 | 1998-06-17 | 10d | -6d | 0d |  |  | 56h |
| 17 | 2.1.1 | Kreiranje rasporeda aktivnosti |  | 3d | 2017-03-15 | 2017-03-17 |  | 1998-06-11 | 1998-06-15 | 6d | -6d | 0d | start no earlier than 2017-03-15 | Stevica Stojković | 12h |
| 18 | 2.1.2 | Izrada vizije sistema |  | 4d | 2017-03-18 | 2017-03-21 | 17 | 1998-06-11 | 1998-06-17 | 10d | -6d | 0d |  | Tim Bellum Gerere | 16h |
| 19 | 2.1.3 | Modelovanje domena |  | 1d | 2017-03-22 | 2017-03-22 | 18 | 1998-06-11 | 1998-06-17 | 10d | -6d | 0d |  | Tim Bellum Gerere | 4h |
| 20 | 2.1.4 | Analiza slučajeva korišćenja |  | 6d | 2017-03-23 | 2017-03-28 | 19 | 1998-06-19 | 1998-06-23 | 6d | -6d | 0d |  | Tim Bellum Gerere | 24h |
| 22 | 3 | **Faza razrade projekta** |  | 21d | 2017-03-23 | 2017-04-12 | 15 | 1998-06-18 | 1998-08-20 | 92d | 5.25d | 0d |  |  | 112h |
| 23 | 3.1 | **Razvoj arhitekturnog prototipa** |  | 21d | 2017-03-23 | 2017-04-12 |  | 1998-06-18 | 1998-07-20 | 46d | 5.25d |  |  |  | 112h |
| 24 | 3.1.1 | Izrada dokumenta o zahtevima |  | 7d | 2017-03-23 | 2017-03-29 |  | 1998-06-19 | 1998-06-25 | 10d | 19.25d | 5.25d |  | Stevica Stojković | 28h |
| 25 | 3.1.2 | Implementacija arhitekturnog prototipa |  | 10d | 2017-03-23 | 2017-04-01 |  | 1998-07-01 | 1998-07-10 | 16d | 5.25d | 0d |  | Tim Bellum Gerere | 40h |
| 26 | 3.1.3 | Testiranje arhitekture |  | 1d | 2017-04-02 | 2017-04-02 | 25 | 1998-07-08 | 1998-07-16 | 14d | 5.25d | 0d |  | Tim Bellum Gerere | 4h |
| 27 | 3.1.4 | Implementacija prototipa korisničkog interfejsa |  | 3d | 2017-04-03 | 2017-04-05 | 26 | 1998-06-18 | 1998-07-20 | 46d | 5.25d | 0d |  | Marko Vučković | 12h |
| 28 | 3.1.5 | Izrada arhitekturnog projekta |  | 7d | 2017-04-06 | 2017-04-12 | 27 | 1998-06-23 | 1998-07-06 | 20d | 5.25d |  |  | Tim Bellum Gerere | 28h |

| ID | WBS | Task | Duration | Start | Finish | Predecessors | Baseline start | Baseline finish | Baseline duration | Total slack | Free slack | Resources | Work |
| --- | --- | --- | --- | --- | --- | --- | --- | --- | --- | --- | --- | --- | --- |
| 30 | 4 | **Faza izrade projekta** | 28d | 2017-04-13 | 2017-05-10 | 22 | 1998-08-21 | 1998-10-06 | 66d | 5.25d |  |  | 152h |
| 31 | 4.1 | **Razvoj konačne verzije** | 28d | 2017-04-13 | 2017-05-10 |  | 1998-09-07 | 1998-09-21 | 22d | 5.25d | 0d |  | 152h |
| 32 | 4.1.1 | Izrada detaljnog projekta | 10d | 2017-04-13 | 2017-04-22 |  |  |  |  | 23.25d | 9.25d | Tim Bellum Gerere | 40h |
| 33 | 4.1.2 | Implementacija komponenti | 20d | 2017-04-13 | 2017-05-02 |  | 1998-09-08 | 1998-09-15 | 12d | 5.25d | 0d | Tim Bellum Gerere | 80h |
| 34 | 4.1.3 | Izrada plana testiranja | 3d | 2017-05-03 | 2017-05-05 | 33 |  |  |  | 5.25d | 0d | Stevica Stojković | 12h |
| 35 | 4.1.4 | Testiranje konačne verzije | 4d | 2017-05-06 | 2017-05-09 | 34 | 1998-09-08 | 1998-09-17 | 16d | 5.25d | 0d | Tim Bellum Gerere | 16h |
| 36 | 4.1.5 | Ažuriranje izveštaja o testiranju | 1d | 2017-05-10 | 2017-05-10 | 35 | 1998-09-07 | 1998-09-21 | 22d | 5.25d |  | Marko Vučković | 4h |
| 38 | 5 | **Faza okončanja projekta** | 14d | 2017-05-11 | 2017-05-24 | 31 | 1998-10-07 | 1998-10-19 | 18d | 5.25d |  |  | 56h |
| 39 | 5.1 | **Instalacija sistema** | 14d | 2017-05-11 | 2017-05-24 |  | 1998-10-07 | 1998-10-19 | 18d | 5.25d |  |  | 56h |
| 40 | 5.1.1 | Sređivanje projektne dokumentacije | 7d | 2017-05-11 | 2017-05-17 |  |  |  |  | 5.25d | 0d | Tim Bellum Gerere | 28h |
| 41 | 5.1.2 | Izrada korisničkog uputstva | 6d | 2017-05-18 | 2017-05-23 | 40 | 1998-10-07 | 1998-10-19 | 18d | 5.25d | 0d | Marko Vučković | 24h |
| 42 | 5.1.3 | Instalacija sistema | 1d | 2017-05-24 | 2017-05-24 | 41 |  |  |  | 5.25d |  | Stevica Stojković | 4h |
